# Cronograma Documentacion

How a schedule from ProjectLibre changed from version to version. A marks actual dates.

## Version 1 (saved 2015-11-05, file Cronograma Documentacion.pod)

Note of the change: Agregando documentos faltantes para la creación del repositorio.

| ID | WBS | Task | Duration | Start | Finish | Predecessors |
| --- | --- | --- | --- | --- | --- | --- |
| 1 | 1 | **Documentación Talentos para el Empleo** | 9.6d | 2015-09-30 08:00 | 2015-10-13 13:48 |  |
| 2 | 1.1 | **Análisis** | 1.56d | 2015-09-30 16:16 | 2015-10-02 11:45 |  |
| 3 | 1.1.1 | **Documentación de Requerimientos del proceso.** | 0.52d | 2015-09-30 16:16 | 2015-10-01 11:26 |  |
| 4 |  | Preinscripción | 0.13d | 2015-09-30 16:16 | 2015-10-01 08:19 | 26 |
| 5 |  | Matricula | 0.13d | 2015-10-01 08:19 | 2015-10-01 09:21 | 4 |
| 6 |  | Seguimiento | 0.13d | 2015-10-01 09:21 | 2015-10-01 10:24 | 5 |
| 7 |  | Cierre | 0.13d | 2015-10-01 10:24 | 2015-10-01 11:26 | 6 |
| 8 | 1.1.2 | **Documentación de Diagramas de casos de uso.** | 0.52d | 2015-10-01 11:26 | 2015-10-01 16:36 |  |
| 9 |  | Preinscripción | 0.13d | 2015-10-01 11:26 | 2015-10-01 13:28 | 7 |
| 10 |  | Matricula | 0.13d | 2015-10-01 13:28 | 2015-10-01 14:31 | 9 |
| 11 |  | Seguimiento | 0.13d | 2015-10-01 14:31 | 2015-10-01 15:33 | 10 |
| 12 |  | Cierre | 0.13d | 2015-10-01 15:33 | 2015-10-01 16:36 | 11 |
| 13 | 1.1.3 | **Documentación de Diagramas de flujo del proceso.** | 0.52d | 2015-10-01 16:36 | 2015-10-02 11:45 |  |
| 14 |  | Preinscripción | 0.13d | 2015-10-01 16:36 | 2015-10-02 08:38 | 12 |
| 15 |  | Matricula | 0.13d | 2015-10-02 08:38 | 2015-10-02 09:40 | 14 |
| 16 |  | Seguimiento | 0.13d | 2015-10-02 09:40 | 2015-10-02 10:43 | 15 |
| 17 |  | Cierre | 0.13d | 2015-10-02 10:43 | 2015-10-02 11:45 | 16 |
| 18 | 1.2 | **Diseño** | 3.38d | 2015-09-30 08:00 | 2015-10-05 11:02 |  |
| 19 | 1.2.1 | **Documentación de Modelo de base de datos.** | 0.91d | 2015-09-30 08:00 | 2015-09-30 16:16 |  |
| 20 |  | Proyecto | 0.13d | 2015-09-30 08:00 | 2015-09-30 09:02 |  |
| 21 |  | Institución | 0.13d | 2015-09-30 09:02 | 2015-09-30 10:04 | 20 |
| 22 |  | Paquete | 0.13d | 2015-09-30 10:04 | 2015-09-30 11:07 | 21 |
| 23 |  | Beneficiario | 0.13d | 2015-09-30 11:07 | 2015-09-30 13:09 | 22 |
| 24 |  | Soportes y Novedades Beneficiario | 0.13d | 2015-09-30 13:09 | 2015-09-30 14:12 | 23 |
| 25 |  | Seguimiento | 0.13d | 2015-09-30 14:12 | 2015-09-30 15:14 | 24 |
| 26 |  | Cierre | 0.13d | 2015-09-30 15:14 | 2015-09-30 16:16 | 25 |
| 27 | 1.2.2 | **Documentación de interfaces.** | 0.91d | 2015-10-02 11:45 | 2015-10-05 11:02 |  |
| 28 |  | Proyecto | 0.13d | 2015-10-02 11:45 | 2015-10-02 13:48 | 17 |
| 29 |  | Institución | 0.13d | 2015-10-02 13:48 | 2015-10-02 14:50 | 28 |
| 30 |  | Paquete | 0.13d | 2015-10-02 14:50 | 2015-10-02 15:52 | 29 |
| 31 |  | Beneficiario | 0.13d | 2015-10-02 15:52 | 2015-10-02 16:55 | 30 |
| 32 |  | Soportes y Novedades Beneficiario | 0.13d | 2015-10-02 16:55 | 2015-10-05 08:57 | 31 |
| 33 |  | Seguimiento | 0.13d | 2015-10-05 08:57 | 2015-10-05 10:00 | 32 |
| 34 |  | Cierre | 0.13d | 2015-10-05 10:00 | 2015-10-05 11:02 | 33 |
| 35 | 1.3 | **Desarrollo** | 0.91d | 2015-10-05 11:02 | 2015-10-06 10:19 |  |
| 36 | 1.3.1 | **Documentación de manual de usuario.** | 0.91d | 2015-10-05 11:02 | 2015-10-06 10:19 |  |
| 37 |  | Proyecto | 0.13d | 2015-10-05 11:02 | 2015-10-05 13:04 | 34 |
| 38 |  | Institución | 0.13d | 2015-10-05 13:04 | 2015-10-05 14:07 | 37 |
| 39 |  | Paquete | 0.13d | 2015-10-05 14:07 | 2015-10-05 15:09 | 38 |
| 40 |  | Beneficiario | 0.13d | 2015-10-05 15:09 | 2015-10-05 16:12 | 39 |
| 41 |  | Soportes y Novedades Beneficiario | 0.13d | 2015-10-05 16:12 | 2015-10-06 08:14 | 40 |
| 42 |  | Seguimiento | 0.13d | 2015-10-06 08:14 | 2015-10-06 09:16 | 41 |
| 43 |  | Cierre | 0.13d | 2015-10-06 09:16 | 2015-10-06 10:19 | 42 |
| 44 | 1.4 | **Pruebas** | 3.49d | 2015-10-06 10:19 | 2015-10-09 15:14 |  |
| 45 | 1.4.1 | **Documentación de solicitud de pruebas.** | 3.49d | 2015-10-06 10:19 | 2015-10-09 15:14 |  |
| 46 |  | Solicitud de Pruebas 0001 | 0.13d | 2015-10-06 10:19 | 2015-10-06 11:21 | 43 |
| 47 |  | Solicitud de Pruebas 0002 | 0.13d | 2015-10-06 11:21 | 2015-10-06 13:24 | 46 |
| 48 |  | Solicitud de Pruebas 0003 | 0.13d | 2015-10-06 13:24 | 2015-10-06 14:26 | 47 |
| 49 |  | Solicitud de Pruebas 0004 | 0.13d | 2015-10-06 14:26 | 2015-10-06 15:28 | 48 |
| 50 |  | Solicitud de Pruebas 0005 | 0.13d | 2015-10-06 15:28 | 2015-10-06 16:31 | 49 |
| 51 |  | Solicitud de Pruebas 0006 | 0.13d | 2015-10-06 16:31 | 2015-10-07 08:33 | 50 |
| 52 |  | Solicitud de Pruebas 0007 | 0.13d | 2015-10-07 08:33 | 2015-10-07 09:36 | 51 |
| 53 |  | Solicitud de Pruebas 0008 | 0.13d | 2015-10-07 09:36 | 2015-10-07 10:38 | 52 |
| 54 |  | Solicitud de Pruebas 0009 | 0.13d | 2015-10-07 10:38 | 2015-10-07 11:40 | 53 |
| 55 |  | Solicitud de Pruebas 0010 | 0.13d | 2015-10-07 11:40 | 2015-10-07 13:43 | 54 |
| 56 |  | Solicitud de Pruebas 0011 | 0.13d | 2015-10-07 13:43 | 2015-10-07 14:45 | 55 |
| 57 |  | Solicitud de Pruebas 0012 | 0.13d | 2015-10-07 14:45 | 2015-10-07 15:48 | 56 |
| 58 |  | Solicitud de Pruebas 0013 | 0.13d | 2015-10-07 15:48 | 2015-10-07 16:50 | 57 |
| 59 |  | Solicitud de Pruebas 0014 | 0.13d | 2015-10-07 16:50 | 2015-10-08 08:52 | 58 |
| 60 |  | Solicitud de Pruebas 0015 | 0.13d | 2015-10-08 08:52 | 2015-10-08 09:55 | 59 |
| 61 |  | Solicitud de Pruebas 0016 | 0.13d | 2015-10-08 09:55 | 2015-10-08 10:57 | 60 |
| 62 |  | Solicitud de Pruebas 0017 | 0.13d | 2015-10-08 10:57 | 2015-10-08 13:00 | 61 |
| 63 |  | Solicitud de Pruebas 0018 | 0.5d | 2015-10-08 13:00 | 2015-10-08 17:00 | 62 |
| 64 |  | Solicitud de Pruebas 0019 | 0.13d | 2015-10-09 08:00 | 2015-10-09 09:02 | 63 |
| 65 |  | Solicitud de Pruebas 0020 | 0.13d | 2015-10-09 09:02 | 2015-10-09 10:04 | 64 |
| 66 |  | Solicitud de Pruebas 0021 | 0.13d | 2015-10-09 10:04 | 2015-10-09 11:07 | 65 |
| 67 |  | Solicitud de Pruebas 0022 | 0.13d | 2015-10-09 11:07 | 2015-10-09 13:09 | 66 |
| 68 |  | Solicitud de Pruebas 0023 | 0.13d | 2015-10-09 13:09 | 2015-10-09 14:12 | 67 |
| 69 |  | Solicitud de Pruebas 0024 | 0.13d | 2015-10-09 14:12 | 2015-10-09 15:14 | 68 |
| 70 | 1.5 | **Implementación** | 1.82d | 2015-10-09 15:14 | 2015-10-13 13:48 |  |

| ID | WBS | Task | Duration | Start | Finish | Predecessors |
| --- | --- | --- | --- | --- | --- | --- |
| 71 | 1.5.1 | **Documentación paso a paso de puesta en producción.** | 1.82d | 2015-10-09 15:14 | 2015-10-13 13:48 |  |
| 72 |  | Versión 0001 | 0.13d | 2015-10-09 15:14 | 2015-10-09 16:16 | 69 |
| 73 |  | Versión 0002 | 0.13d | 2015-10-09 16:16 | 2015-10-12 08:19 | 72 |
| 74 |  | Versión 0003 | 0.13d | 2015-10-12 08:19 | 2015-10-12 09:21 | 73 |
| 75 |  | Versión 0004 | 0.13d | 2015-10-12 09:21 | 2015-10-12 10:24 | 74 |
| 76 |  | Versión 0005 | 0.13d | 2015-10-12 10:24 | 2015-10-12 11:26 | 75 |
| 77 |  | Versión 0006 | 0.13d | 2015-10-12 11:26 | 2015-10-12 13:28 | 76 |
| 78 |  | Versión 0007 | 0.13d | 2015-10-12 13:28 | 2015-10-12 14:31 | 77 |
| 79 |  | Versión 0008 | 0.13d | 2015-10-12 14:31 | 2015-10-12 15:33 | 78 |
| 80 |  | Versión 0009 | 0.13d | 2015-10-12 15:33 | 2015-10-12 16:36 | 79 |
| 81 |  | Versión 0010 | 0.13d | 2015-10-12 16:36 | 2015-10-13 08:38 | 80 |
| 82 |  | Versión 0011 | 0.13d | 2015-10-13 08:38 | 2015-10-13 09:40 | 81 |
| 83 |  | Versión 0012 | 0.13d | 2015-10-13 09:40 | 2015-10-13 10:43 | 82 |
| 84 |  | Versión 0013 | 0.13d | 2015-10-13 10:43 | 2015-10-13 11:45 | 83 |
| 85 |  | Versión 0014 | 0.13d | 2015-10-13 11:45 | 2015-10-13 13:48 | 84 |

## Version 2 (saved 2015-11-05, file UASPE-TalentosEmpleo-Documentacion.gantter)

Note of the change: Agregando documentos faltantes para la creación del repositorio.

Last finish 2015-10-13 → 2015-10-16 (+3d).

Changed:

| ID | Task | Start | Finish | Duration | Total float |
| --- | --- | --- | --- | --- | --- |
| 1 | **Documentación Talentos para el Empleo** | 2015-09-30 08:00 → 2015-10-01 08:00 A (+1d) | 2015-10-13 13:48 → 2015-10-16 14:12 (+3d) | 9.6d → 10.65d | none → 0d |
| 2 | **Análisis** | 2015-09-30 16:16 → 2015-10-02 08:24 A (+2d) | 2015-10-02 11:45 → 2015-10-05 15:48 (+3d) | 1.56d → 1.8d | none → 0d |
| 3 | **Documentación de Requerimientos del proceso.** | 2015-09-30 16:16 → 2015-10-02 08:24 A (+2d) | 2015-10-01 11:26 → 2015-10-02 14:12 (+1d) | 0.52d → 0.6d | none → 0d |
| 4 | Preinscripción | 2015-09-30 16:16 → 2015-10-02 08:24 A (+2d) | 2015-10-01 08:19 → 2015-10-02 09:36 (+1d) | 0.13d → 0.15d | none → 0d |
| 5 | Matricula | 2015-10-01 08:19 → 2015-10-02 09:36 A (+1d) | 2015-10-01 09:21 → 2015-10-02 10:48 (+1d) | 0.13d → 0.15d | none → 0d |
| 6 | Seguimiento | 2015-10-01 09:21 → 2015-10-02 10:48 A (+1d) | 2015-10-01 10:24 → 2015-10-02 12:00 (+1d) | 0.13d → 0.15d | none → 0d |
| 7 | Cierre | 2015-10-01 10:24 → 2015-10-02 13:00 A (+1d) | 2015-10-01 11:26 → 2015-10-02 14:12 (+1d) | 0.13d → 0.15d | none → 0d |
| 8 | **Documentación de Diagramas de casos de uso.** | 2015-10-01 11:26 → 2015-10-02 14:12 A (+1d) | 2015-10-01 16:36 → 2015-10-05 10:00 (+4d) | 0.52d → 0.6d | none → 0d |
| 9 | Preinscripción | 2015-10-01 11:26 → 2015-10-02 14:12 A (+1d) | 2015-10-01 13:28 → 2015-10-02 15:24 (+1d) | 0.13d → 0.15d | none → 0d |
| 10 | Matricula | 2015-10-01 13:28 → 2015-10-02 15:24 A (+1d) | 2015-10-01 14:31 → 2015-10-02 16:36 (+1d) | 0.13d → 0.15d | none → 0d |
| 11 | Seguimiento | 2015-10-01 14:31 → 2015-10-02 16:36 A (+1d) | 2015-10-01 15:33 → 2015-10-05 08:48 (+4d) | 0.13d → 0.15d | none → 0d |
| 12 | Cierre | 2015-10-01 15:33 → 2015-10-05 08:48 A (+4d) | 2015-10-01 16:36 → 2015-10-05 10:00 (+4d) | 0.13d → 0.15d | none → 0d |
| 13 | **Documentación de Diagramas de flujo del proceso.** | 2015-10-01 16:36 → 2015-10-05 10:00 A (+4d) | 2015-10-02 11:45 → 2015-10-05 15:48 (+3d) | 0.52d → 0.6d | none → 0d |
| 14 | Preinscripción | 2015-10-01 16:36 → 2015-10-05 10:00 A (+4d) | 2015-10-02 08:38 → 2015-10-05 11:12 (+3d) | 0.13d → 0.15d | none → 0d |
| 15 | Matricula | 2015-10-02 08:38 → 2015-10-05 11:12 A (+3d) | 2015-10-02 09:40 → 2015-10-05 13:24 (+3d) | 0.13d → 0.15d | none → 0d |
| 16 | Seguimiento | 2015-10-02 09:40 → 2015-10-05 13:24 A (+3d) | 2015-10-02 10:43 → 2015-10-05 14:36 (+3d) | 0.13d → 0.15d | none → 0d |
| 17 | Cierre | 2015-10-02 10:43 → 2015-10-05 14:36 A (+3d) | 2015-10-02 11:45 → 2015-10-05 15:48 (+3d) | 0.13d → 0.15d | none → 0d |
| 18 | **Diseño** | 2015-09-30 08:00 → 2015-10-01 08:00 A (+1d) | 2015-10-05 11:02 → 2015-10-06 16:12 (+1d) | 3.38d → 3.9d | none → 0d |
| 19 | **Documentación de Modelo de base de datos.** | 2015-09-30 08:00 → 2015-10-01 08:00 A (+1d) | 2015-09-30 16:16 → 2015-10-02 08:24 (+2d) | 0.91d → 1.05d | none → 0d |
| 20 | Proyecto | 2015-09-30 08:00 → 2015-10-01 08:00 A (+1d) | 2015-09-30 09:02 → 2015-10-01 09:12 (+1d) | 0.13d → 0.15d | none → 0d |
| 21 | Institución | 2015-09-30 09:02 → 2015-10-01 09:12 A (+1d) | 2015-09-30 10:04 → 2015-10-01 10:24 (+1d) | 0.13d → 0.15d | none → 0d |
| 22 | Paquete | 2015-09-30 10:04 → 2015-10-01 10:24 A (+1d) | 2015-09-30 11:07 → 2015-10-01 11:36 (+1d) | 0.13d → 0.15d | none → 0d |
| 23 | Beneficiario | 2015-09-30 11:07 → 2015-10-01 11:36 A (+1d) | 2015-09-30 13:09 → 2015-10-01 13:48 (+1d) | 0.13d → 0.15d | none → 0d |
| 24 | Soportes y Novedades Beneficiario | 2015-09-30 13:09 → 2015-10-01 13:48 A (+1d) | 2015-09-30 14:12 → 2015-10-01 15:00 (+1d) | 0.13d → 0.15d | none → 0d |
| 25 | Seguimiento | 2015-09-30 14:12 → 2015-10-01 15:00 A (+1d) | 2015-09-30 15:14 → 2015-10-01 16:12 (+1d) | 0.13d → 0.15d | none → 0d |
| 26 | Cierre | 2015-09-30 15:14 → 2015-10-01 16:12 A (+1d) | 2015-09-30 16:16 → 2015-10-02 08:24 (+2d) | 0.13d → 0.15d | none → 0d |
| 27 | **Documentación de interfaces.** | 2015-10-02 11:45 → 2015-10-05 15:48 A (+3d) | 2015-10-05 11:02 → 2015-10-06 16:12 (+1d) | 0.91d → 1.05d | none → 0d |
| 28 | Proyecto | 2015-10-02 11:45 → 2015-10-05 15:48 A (+3d) | 2015-10-02 13:48 → 2015-10-05 17:00 (+3d) | 0.13d → 0.15d | none → 0d |
| 29 | Institución | 2015-10-02 13:48 → 2015-10-06 08:00 A (+4d) | 2015-10-02 14:50 → 2015-10-06 09:12 (+4d) | 0.13d → 0.15d | none → 0d |
| 30 | Paquete | 2015-10-02 14:50 → 2015-10-06 09:12 A (+4d) | 2015-10-02 15:52 → 2015-10-06 10:24 (+4d) | 0.13d → 0.15d | none → 0d |
| 31 | Beneficiario | 2015-10-02 15:52 → 2015-10-06 10:24 A (+4d) | 2015-10-02 16:55 → 2015-10-06 11:36 (+4d) | 0.13d → 0.15d | none → 0d |
| 32 | Soportes y Novedades Beneficiario | 2015-10-02 16:55 → 2015-10-06 11:36 A (+4d) | 2015-10-05 08:57 → 2015-10-06 13:48 (+1d) | 0.13d → 0.15d | none → 0d |
| 33 | Seguimiento | 2015-10-05 08:57 → 2015-10-06 13:48 A (+1d) | 2015-10-05 10:00 → 2015-10-06 15:00 (+1d) | 0.13d → 0.15d | none → 0d |
| 34 | Cierre | 2015-10-05 10:00 → 2015-10-06 15:00 A (+1d) | 2015-10-05 11:02 → 2015-10-06 16:12 (+1d) | 0.13d → 0.15d | none → 0d |
| 35 | **Desarrollo** | 2015-10-05 11:02 → 2015-10-06 16:12 A (+1d) | 2015-10-06 10:19 → 2015-10-07 16:36 (+1d) | 0.91d → 1.05d | none → 0d |
| 36 | **Documentación de manual de usuario.** | 2015-10-05 11:02 → 2015-10-06 16:12 A (+1d) | 2015-10-06 10:19 → 2015-10-07 16:36 (+1d) | 0.91d → 1.05d | none → 0d |
| 37 | Proyecto | 2015-10-05 11:02 → 2015-10-06 16:12 A (+1d) | 2015-10-05 13:04 → 2015-10-07 08:24 (+2d) | 0.13d → 0.15d | none → 0d |
| 38 | Institución | 2015-10-05 13:04 → 2015-10-07 08:24 A (+2d) | 2015-10-05 14:07 → 2015-10-07 09:36 (+2d) | 0.13d → 0.15d | none → 0d |
| 39 | Paquete | 2015-10-05 14:07 → 2015-10-07 09:36 A (+2d) | 2015-10-05 15:09 → 2015-10-07 10:48 (+2d) | 0.13d → 0.15d | none → 0d |
| 40 | Beneficiario | 2015-10-05 15:09 → 2015-10-07 10:48 A (+2d) | 2015-10-05 16:12 → 2015-10-07 12:00 (+2d) | 0.13d → 0.15d | none → 0d |
| 41 | Soportes y Novedades Beneficiario | 2015-10-05 16:12 → 2015-10-07 13:00 A (+2d) | 2015-10-06 08:14 → 2015-10-07 14:12 (+1d) | 0.13d → 0.15d | none → 0d |
| 42 | Seguimiento | 2015-10-06 08:14 → 2015-10-07 14:12 A (+1d) | 2015-10-06 09:16 → 2015-10-07 15:24 (+1d) | 0.13d → 0.15d | none → 0d |
| 43 | Cierre | 2015-10-06 09:16 → 2015-10-07 15:24 A (+1d) | 2015-10-06 10:19 → 2015-10-07 16:36 (+1d) | 0.13d → 0.15d | none → 0d |
| 44 | **Pruebas** | 2015-10-06 10:19 → 2015-10-07 16:36 A (+1d) | 2015-10-09 15:14 → 2015-10-14 13:24 (+5d) | 3.49d → 3.6d | none → 0d |
| 45 | **Documentación de solicitud de pruebas.** | 2015-10-06 10:19 → 2015-10-07 16:36 A (+1d) | 2015-10-09 15:14 → 2015-10-14 13:24 (+5d) | 3.49d → 3.6d | none → 0d |
| 46 | Solicitud de Pruebas 0001 | 2015-10-06 10:19 → 2015-10-07 16:36 A (+1d) | 2015-10-06 11:21 → 2015-10-08 08:48 (+2d) | 0.13d → 0.15d | none → 0d |
| 47 | Solicitud de Pruebas 0002 | 2015-10-06 11:21 → 2015-10-08 08:48 A (+2d) | 2015-10-06 13:24 → 2015-10-08 10:00 (+2d) | 0.13d → 0.15d | none → 0d |
| 48 | Solicitud de Pruebas 0003 | 2015-10-06 13:24 → 2015-10-08 10:00 A (+2d) | 2015-10-06 14:26 → 2015-10-08 11:12 (+2d) | 0.13d → 0.15d | none → 0d |
| 49 | Solicitud de Pruebas 0004 | 2015-10-06 14:26 → 2015-10-08 11:12 A (+2d) | 2015-10-06 15:28 → 2015-10-08 13:24 (+2d) | 0.13d → 0.15d | none → 0d |
| 50 | Solicitud de Pruebas 0005 | 2015-10-06 15:28 → 2015-10-08 13:24 A (+2d) | 2015-10-06 16:31 → 2015-10-08 14:36 (+2d) | 0.13d → 0.15d | none → 0d |
| 51 | Solicitud de Pruebas 0006 | 2015-10-06 16:31 → 2015-10-08 14:36 A (+2d) | 2015-10-07 08:33 → 2015-10-08 15:48 (+1d) | 0.13d → 0.15d | none → 0d |
| 52 | Solicitud de Pruebas 0007 | 2015-10-07 08:33 → 2015-10-08 15:48 A (+1d) | 2015-10-07 09:36 → 2015-10-08 17:00 (+1d) | 0.13d → 0.15d | none → 0d |
| 53 | Solicitud de Pruebas 0008 | 2015-10-07 09:36 → 2015-10-09 08:00 A (+2d) | 2015-10-07 10:38 → 2015-10-09 09:12 (+2d) | 0.13d → 0.15d | none → 0d |
| 54 | Solicitud de Pruebas 0009 | 2015-10-07 10:38 → 2015-10-09 09:12 A (+2d) | 2015-10-07 11:40 → 2015-10-09 10:24 (+2d) | 0.13d → 0.15d | none → 0d |
| 55 | Solicitud de Pruebas 0010 | 2015-10-07 11:40 → 2015-10-09 10:24 A (+2d) | 2015-10-07 13:43 → 2015-10-09 11:36 (+2d) | 0.13d → 0.15d | none → 0d |
| 56 | Solicitud de Pruebas 0011 | 2015-10-07 13:43 → 2015-10-09 11:36 A (+2d) | 2015-10-07 14:45 → 2015-10-09 13:48 (+2d) | 0.13d → 0.15d | none → 0d |
| 57 | Solicitud de Pruebas 0012 | 2015-10-07 14:45 → 2015-10-09 13:48 A (+2d) | 2015-10-07 15:48 → 2015-10-09 15:00 (+2d) | 0.13d → 0.15d | none → 0d |
| 58 | Solicitud de Pruebas 0013 | 2015-10-07 15:48 → 2015-10-09 15:00 A (+2d) | 2015-10-07 16:50 → 2015-10-09 16:12 (+2d) | 0.13d → 0.15d | none → 0d |
| 59 | Solicitud de Pruebas 0014 | 2015-10-07 16:50 → 2015-10-09 16:12 A (+2d) | 2015-10-08 08:52 → 2015-10-13 08:24 (+5d) | 0.13d → 0.15d | none → 0d |
| 60 | Solicitud de Pruebas 0015 | 2015-10-08 08:52 → 2015-10-13 08:24 A (+5d) | 2015-10-08 09:55 → 2015-10-13 09:36 (+5d) | 0.13d → 0.15d | none → 0d |
| 61 | Solicitud de Pruebas 0016 | 2015-10-08 09:55 → 2015-10-13 09:36 A (+5d) | 2015-10-08 10:57 → 2015-10-13 10:48 (+5d) | 0.13d → 0.15d | none → 0d |
| 62 | Solicitud de Pruebas 0017 | 2015-10-08 10:57 → 2015-10-13 10:48 A (+5d) | 2015-10-08 13:00 → 2015-10-13 12:00 (+5d) | 0.13d → 0.15d | none → 0d |
| 63 | Solicitud de Pruebas 0018 | 2015-10-08 13:00 → 2015-10-13 13:00 A (+5d) | 2015-10-08 17:00 → 2015-10-13 14:12 (+5d) | 0.5d → 0.15d | none → 0d |
| 64 | Solicitud de Pruebas 0019 | 2015-10-09 08:00 → 2015-10-13 14:12 A (+4d) | 2015-10-09 09:02 → 2015-10-13 15:24 (+4d) | 0.13d → 0.15d | none → 0d |
| 65 | Solicitud de Pruebas 0020 | 2015-10-09 09:02 → 2015-10-13 15:24 A (+4d) | 2015-10-09 10:04 → 2015-10-13 16:36 (+4d) | 0.13d → 0.15d | none → 0d |
| 66 | Solicitud de Pruebas 0021 | 2015-10-09 10:04 → 2015-10-13 16:36 A (+4d) | 2015-10-09 11:07 → 2015-10-14 08:48 (+5d) | 0.13d → 0.15d | none → 0d |
| 67 | Solicitud de Pruebas 0022 | 2015-10-09 11:07 → 2015-10-14 08:48 A (+5d) | 2015-10-09 13:09 → 2015-10-14 10:00 (+5d) | 0.13d → 0.15d | none → 0d |
| 68 | Solicitud de Pruebas 0023 | 2015-10-09 13:09 → 2015-10-14 10:00 A (+5d) | 2015-10-09 14:12 → 2015-10-14 11:12 (+5d) | 0.13d → 0.15d | none → 0d |
| 69 | Solicitud de Pruebas 0024 | 2015-10-09 14:12 → 2015-10-14 11:12 A (+5d) | 2015-10-09 15:14 → 2015-10-14 13:24 (+5d) | 0.13d → 0.15d | none → 0d |
| 70 | **Implementación** | 2015-10-09 15:14 → 2015-10-14 13:24 A (+5d) | 2015-10-13 13:48 → 2015-10-16 14:12 (+3d) | 1.82d → 2.1d | none → 0d |

| ID | Task | Start | Finish | Duration | Total float |
| --- | --- | --- | --- | --- | --- |
| 71 | **Documentación paso a paso de puesta en producción.** | 2015-10-09 15:14 → 2015-10-14 13:24 A (+5d) | 2015-10-13 13:48 → 2015-10-16 14:12 (+3d) | 1.82d → 2.1d | none → 0d |
| 72 | Versión 0001 | 2015-10-09 15:14 → 2015-10-14 13:24 A (+5d) | 2015-10-09 16:16 → 2015-10-14 14:36 (+5d) | 0.13d → 0.15d | none → 0d |
| 73 | Versión 0002 | 2015-10-09 16:16 → 2015-10-14 14:36 A (+5d) | 2015-10-12 08:19 → 2015-10-14 15:48 (+2d) | 0.13d → 0.15d | none → 0d |
| 74 | Versión 0003 | 2015-10-12 08:19 → 2015-10-14 15:48 A (+2d) | 2015-10-12 09:21 → 2015-10-14 17:00 (+2d) | 0.13d → 0.15d | none → 0d |
| 75 | Versión 0004 | 2015-10-12 09:21 → 2015-10-15 08:00 A (+3d) | 2015-10-12 10:24 → 2015-10-15 09:12 (+3d) | 0.13d → 0.15d | none → 0d |
| 76 | Versión 0005 | 2015-10-12 10:24 → 2015-10-15 09:12 A (+3d) | 2015-10-12 11:26 → 2015-10-15 10:24 (+3d) | 0.13d → 0.15d | none → 0d |
| 77 | Versión 0006 | 2015-10-12 11:26 → 2015-10-15 10:24 A (+3d) | 2015-10-12 13:28 → 2015-10-15 11:36 (+3d) | 0.13d → 0.15d | none → 0d |
| 78 | Versión 0007 | 2015-10-12 13:28 → 2015-10-15 11:36 A (+3d) | 2015-10-12 14:31 → 2015-10-15 13:48 (+3d) | 0.13d → 0.15d | none → 0d |
| 79 | Versión 0008 | 2015-10-12 14:31 → 2015-10-15 13:48 A (+3d) | 2015-10-12 15:33 → 2015-10-15 15:00 (+3d) | 0.13d → 0.15d | none → 0d |
| 80 | Versión 0009 | 2015-10-12 15:33 → 2015-10-15 15:00 A (+3d) | 2015-10-12 16:36 → 2015-10-15 16:12 (+3d) | 0.13d → 0.15d | none → 0d |
| 81 | Versión 0010 | 2015-10-12 16:36 → 2015-10-15 16:12 A (+3d) | 2015-10-13 08:38 → 2015-10-16 08:24 (+3d) | 0.13d → 0.15d | none → 0d |
| 82 | Versión 0011 | 2015-10-13 08:38 → 2015-10-16 08:24 A (+3d) | 2015-10-13 09:40 → 2015-10-16 09:36 (+3d) | 0.13d → 0.15d | none → 0d |
| 83 | Versión 0012 | 2015-10-13 09:40 → 2015-10-16 09:36 A (+3d) | 2015-10-13 10:43 → 2015-10-16 10:48 (+3d) | 0.13d → 0.15d | none → 0d |
| 84 | Versión 0013 | 2015-10-13 10:43 → 2015-10-16 10:48 A (+3d) | 2015-10-13 11:45 → 2015-10-16 12:00 (+3d) | 0.13d → 0.15d | none → 0d |
| 85 | Versión 0014 | 2015-10-13 11:45 → 2015-10-16 13:00 A (+3d) | 2015-10-13 13:48 → 2015-10-16 14:12 (+3d) | 0.13d → 0.15d | none → 0d |
